# ipuatsons-WBS

Schedule from MS Project, 2022-08-01 to 2023-03-24, costs in ฿, A marks actual dates.

## Calendars

- Standard: Mon-Fri 08:00-12:00, 13:00-17:00; Sat-Sun off.

## Resources

| Resource | Rate |
| --- | --- |
| Pasin | 80 |
| Sutee | 80 |

## Schedule

| ID | WBS | Task | Type | Duration | Start | Finish | Predecessors | Complete | Remaining | Actual finish | Baseline start | Baseline finish | Baseline duration | Resources | Work | Actual work | Cost | Baseline cost | Actual cost |
| --- | --- | --- | --- | --- | --- | --- | --- | --- | --- | --- | --- | --- | --- | --- | --- | --- | --- | --- | --- |
| 1 | 1 | **Requirement Analysis** |  | 7d | 2022-08-01 A | 2022-08-09 A |  | 100% |  |  | 2022-08-01 | 2022-08-09 | 7d |  | 192h | 192h | 15,360 | 15,360 | 15,360 |
| 2 | 1.1 | **Develop Project Title** |  | 4d | 2022-08-01 A | 2022-08-04 A |  | 100% |  |  | 2022-08-01 | 2022-08-04 | 4d |  | 80h | 80h | 6,400 | 6,400 | 6,400 |
| 3 | 1.1.1 | กำหนดจุดมุ่งหมายและขอบเขตการทำงาน |  | 1d | 2022-08-01 A | 2022-08-01 A |  | 100% |  |  | 2022-08-01 | 2022-08-01 | 1d | Pasin; Sutee | 16h | 16h | 1,280 | 1,280 | 1,280 |
| 4 | 1.1.2 | Develop, Review, Approval - Project Title |  | 4d | 2022-08-01 A | 2022-08-04 A |  | 100% |  |  | 2022-08-01 | 2022-08-04 | 4d | Pasin; Sutee | 64h | 64h | 5,120 | 5,120 | 5,120 |
| 5 | 1.2 | **Develop Preliminary Project Scope Statement** |  | 3d | 2022-08-05 A | 2022-08-09 A | 2 | 100% |  |  | 2022-08-05 | 2022-08-09 | 3d |  | 112h | 112h | 8,960 | 8,960 | 8,960 |
| 6 | 1.2.1 | กำหนด Functional Requirements |  | 3d | 2022-08-05 A | 2022-08-09 A |  | 100% |  |  | 2022-08-05 | 2022-08-09 | 3d | Pasin; Sutee | 48h | 48h | 3,840 | 3,840 | 3,840 |
| 7 | 1.2.2 | กำหนด Non Functional Requirements |  | 3d | 2022-08-05 A | 2022-08-09 A |  | 100% |  |  | 2022-08-05 | 2022-08-09 | 3d | Pasin; Sutee | 48h | 48h | 3,840 | 3,840 | 3,840 |
| 8 | 1.2.3 | กำหนดระยะเวลาการทำงาน |  | 1d | 2022-08-05 A | 2022-08-05 A |  | 100% |  |  | 2022-08-05 | 2022-08-05 | 1d | Pasin; Sutee | 16h | 16h | 1,280 | 1,280 | 1,280 |
| 9 | 2 | **Design Phase** |  | 14d | 2022-08-09 A | 2022-08-29 | 1 | 100% |  | 2022-08-16 | 2022-08-09 | 2022-08-29 | 14d |  | 232h | 232h | 18,560 | 18,560 | 18,560 |
| 10 | 2.1 | ออกแบบ UX/UI |  | 5d | 2022-08-10 A | 2022-08-16 A |  | 100% |  |  | 2022-08-10 | 2022-08-16 | 5d | Pasin | 40h | 40h | 3,200 | 3,200 | 3,200 |
| 11 | 2.2 | วาด Use Case Diagram |  | 3d | 2022-08-10 A | 2022-08-12 A |  | 100% |  |  | 2022-08-10 | 2022-08-12 | 3d | Pasin; Sutee | 48h | 48h | 3,840 | 3,840 | 3,840 |
| 12 | 2.3 | ออกแบบ Database |  | 2d | 2022-08-10 A | 2022-08-11 A |  | 100% |  |  | 2022-08-10 | 2022-08-11 | 2d | Pasin; Sutee | 32h | 32h | 2,560 | 2,560 | 2,560 |
| 13 | 2.4 | ประมวลภาพรวมการออกแบบครั้งที่ 1 |  | 0.5d | 2022-08-10 A | 2022-08-10 A |  | 100% |  |  | 2022-08-10 | 2022-08-10 | 0.5d | Pasin; Sutee | 8h | 8h | 640 | 640 | 640 |
| 14 | 2.5 | วาด Object Diagram |  | 1d | 2022-08-10 A | 2022-08-10 A |  | 100% |  |  | 2022-08-10 | 2022-08-10 | 1d | Pasin; Sutee | 16h | 16h | 1,280 | 1,280 | 1,280 |
| 15 | 2.6 | วาด Sequence Diagram |  | 5d | 2022-08-10 A | 2022-08-16 A |  | 100% |  |  | 2022-08-10 | 2022-08-16 | 5d | Pasin; Sutee | 80h | 80h | 6,400 | 6,400 | 6,400 |
| 16 | 2.7 | ประมวลภาพรวมการออกแบบครั้งที่ 2 |  | 0.5d | 2022-08-10 A | 2022-08-10 A |  | 100% |  |  | 2022-08-10 | 2022-08-10 | 0.5d | Pasin; Sutee | 8h | 8h | 640 | 640 | 640 |
| 17 | 2.8 | Design Phase เสร็จสิ้น | milestone | 0d | 2022-08-09 A | 2022-08-09 A |  | 100% |  |  | 2022-08-09 | 2022-08-09 | 0d |  |  |  |  |  |  |
| 18 | 3 | **Implementation - 1st** |  | 81d? | 2022-08-19 A | 2022-12-09 | 9 | 59% | 33.12d? |  | 2022-08-19 | 2022-12-09 | 81d |  | 1300h | 713h | 98,240 | 113,600 | 54,160 |
| 19 | 3.1 | **Tools Study** |  | 11d | 2022-08-19 A | 2022-09-02 A | 9 | 100% |  |  | 2022-08-19 | 2022-09-01 | 10d |  | 160h | 160h | 12,800 | 12,160 | 12,800 |
| 20 | 3.1.1 | เรียนรู้เกี่ยวกับ Vuet js |  | 3d | 2022-08-19 A | 2022-08-23 A |  | 100% |  |  | 2022-08-19 | 2022-08-22 | 2d | Pasin | 24h | 24h | 1,920 | 1,280 | 1,920 |
| 21 | 3.1.2 | เรียนรู้เกี่ยวกับ Django |  | 4d | 2022-08-24 A | 2022-08-29 A | 20 | 100% |  |  | 2022-08-19 | 2022-08-23 | 3d | Pasin | 32h | 32h | 2,560 | 1,920 | 2,560 |
| 22 | 3.1.3 | เรียนรู้เกี่ยวกับ MongoDB |  | 2d | 2022-08-30 A | 2022-08-31 A | 21 | 100% |  |  | 2022-08-19 | 2022-08-22 | 2d | Pasin | 16h | 16h | 1,280 | 1,280 | 1,280 |
| 23 | 3.1.4 | เรียนรู้เกี่ยวกับ Ubuntu Server |  | 1d | 2022-08-19 A | 2022-08-19 A |  | 100% |  |  | 2022-08-19 | 2022-08-19 | 1d | Sutee | 8h | 8h | 640 | 640 | 640 |
| 24 | 3.1.7 | เรียนรู้เกี่ยวกับ Docker |  | 2d | 2022-08-22 A | 2022-08-23 A | 23 | 100% |  |  | 2022-08-19 | 2022-08-22 | 2d | Sutee | 16h | 16h | 1,280 | 1,280 | 1,280 |
| 25 | 3.1.8 | เรียนรู้เกี่ยวกับ Nginx |  | 2d | 2022-08-24 A | 2022-08-25 A | 24 | 100% |  |  | 2022-08-19 | 2022-08-22 | 2d | Sutee | 16h | 16h | 1,280 | 1,280 | 1,280 |
| 26 | 3.1.5 | เรียนรู้เกี่ยวกับ Kubernetes |  | 2d | 2022-08-26 A | 2022-08-29 A | 25 | 100% |  |  | 2022-08-19 | 2022-08-22 | 2d | Sutee | 16h | 16h | 1,280 | 1,280 | 1,280 |
| 27 | 3.1.6 | เรียนรู้เกี่ยวกับ Microk8s, K3D, K3S |  | 4d | 2022-08-30 A | 2022-09-02 A | 26 | 100% |  |  | 2022-08-19 | 2022-08-25 | 5d | Sutee | 32h | 32h | 2,560 | 3,200 | 2,560 |
| 28 | 3.2 | เขียน Progress report #1 | manual | 1d | 2022-08-22 A | 2022-08-22 A | 19 | 100% |  |  | 2022-08-22 | 2022-08-25 | 1d | Pasin; Sutee | 16h | 16h | 1,280 | 1,280 | 1,280 |
| 29 | 3.3 | progress report #1 | milestone, manual | 0d | 2022-08-26 A | 2022-08-26 A |  | 100% |  |  | 2022-08-26 | 2022-08-26 | 0d | Pasin; Sutee |  |  |  |  |  |

| ID | WBS | Task | Type | Duration | Start | Finish | Predecessors | Complete | Remaining | Actual start | Baseline start | Baseline finish | Baseline duration | Total slack | Resources | Work | Actual work | Cost | Baseline cost | Actual cost |
| --- | --- | --- | --- | --- | --- | --- | --- | --- | --- | --- | --- | --- | --- | --- | --- | --- | --- | --- | --- | --- |
| 30 | 3.2 | **Coding Plan** |  | 1d | 2022-08-30 A | 2022-08-31 A | 19 | 100% |  |  | 2022-09-02 | 2022-09-02 | 1d |  |  | 48h | 48h | 3,840 | 3,200 | 3,840 |
| 31 | 3.2.1 | กำหนด Directory ในการทำงาน |  | 1d | 2022-08-31 A | 2022-08-31 A |  | 100% |  |  | 2022-09-02 | 2022-09-02 | 1d |  | Pasin; Sutee | 16h | 16h | 1,280 | 1,280 | 1,280 |
| 32 | 3.2.2 | กำหนด Version ของ framework และ libary ที่ใช้ |  | 1d | 2022-08-31 A | 2022-08-31 A |  | 100% |  |  | 2022-09-02 | 2022-09-02 | 1d |  | Pasin; Sutee | 16h | 16h | 1,280 | 1,280 | 1,280 |
| 33 | 3.4.3 | สร้าง และ ตั้งค่า Docker |  | 1d | 2022-08-31 A | 2022-08-31 A |  | 100% |  |  |  |  |  |  | Sutee | 8h | 8h | 640 |  | 640 |
| 34 | 3.2.3 | สร้าง และ ตั้งค่า Github |  | 1d | 2022-08-30 A | 2022-08-31 A |  | 100% |  |  | 2022-09-02 | 2022-09-02 | 1d |  | Sutee; Pasin | 8h | 8h | 640 | 640 | 640 |
| 35 | 3.3 | **Account & Login Page** |  | 7d | 2022-09-05 A | 2022-09-13 | 30 | 82% | 1.25d |  | 2022-09-05 | 2022-09-13 | 7d |  |  | 88h | 74h | 7,040 | 7,040 | 5,920 |
| 36 | 3.3.1 | พัฒนาส่วน Front End |  | 3d | 2022-09-05 A | 2022-09-07 |  | 75% | 0.75d |  | 2022-09-05 | 2022-09-07 | 3d | 4d | Pasin | 24h | 18h | 1,920 | 1,920 | 1,440 |
| 37 | 3.3.2 | พัฒนาส่วน Backend & API |  | 3d | 2022-09-05 A | 2022-09-07 A |  | 100% |  |  | 2022-09-05 | 2022-09-07 | 3d |  | Pasin; Sutee | 48h | 48h | 3,840 | 3,840 | 3,840 |
| 38 | 3.3.3 | ทดสอบ |  | 1d | 2022-09-05 A | 2022-09-05 |  | 50% | 0.5d |  | 2022-09-05 | 2022-09-05 | 1d | 6d | Pasin; Sutee | 16h | 8h | 1,280 | 1,280 | 640 |
| 39 | 3.6 | เขียน Progress report #2 | manual | 5d | 2022-09-05 A | 2022-09-09 A |  | 100% |  |  | 2022-09-05 | 2022-09-09 | 5d |  | Pasin; Sutee | 80h | 80h | 6,400 | 6,400 | 6,400 |
| 40 | 3.7 | progress report #2 | milestone, manual | 0d | 2022-09-09 A | 2022-09-09 A |  | 100% |  |  | 2022-09-09 | 2022-09-09 | 0d |  |  |  |  |  |  |  |
| 41 | 3.7 | **Setting Page** |  | 7d | 2022-09-14 A | 2022-09-22 | 35 | 54% | 3.25d |  | 2022-11-14 | 2022-11-18 | 5d |  |  | 48h | 24h | 3,840 | 3,840 | 1,920 |
| 42 | 3.7.1 | พัฒนาส่วน Front End |  | 1d | 2022-09-14 A | 2022-09-14 |  | 75% | 0.25d |  | 2022-11-14 | 2022-11-14 | 1d | 4d | Pasin | 8h | 6h | 640 | 640 | 480 |
| 43 | 3.7.2 | พัฒนาส่วน Backend & API |  | 2d | 2022-09-14 A | 2022-09-15 |  | 50% | 1d |  | 2022-11-14 | 2022-11-15 | 2d | 3d | Pasin; Sutee | 32h | 16h | 2,560 | 2,560 | 1,280 |
| 44 | 3.7.3 | ทดสอบ |  | 0.5d | 2022-09-14 A | 2022-09-14 |  | 25% | 0.38d |  | 2022-11-14 | 2022-11-14 | 0.5d | 4.5d | Pasin; Sutee | 8h | 2h | 640 | 640 | 160 |
| 45 | 3.5 | **Drive Page** |  | 14d | 2022-09-23 | 2022-10-12 | 41 | 64% | 5d | 2022-09-21 | 2022-09-21 | 2022-10-04 | 10d |  |  | 128h | 96h | 10,240 | 10,240 | 7,680 |
| 46 | 3.5.1 | พัฒนาส่วน Front End |  | 5d | 2022-09-23 A | 2022-09-29 |  | 30% | 3.5d |  | 2022-09-21 | 2022-09-27 | 5d | 3d | Pasin | 40h | 12h | 3,200 | 3,200 | 960 |
| 47 | 3.5.2 | พัฒนาส่วน Backend & API |  | 5d | 2022-09-21 A | 2022-09-28 A |  | 100% |  |  | 2022-09-21 | 2022-09-27 | 5d |  | Pasin; Sutee | 80h | 80h | 6,400 | 6,400 | 6,400 |
| 48 | 3.5.3 | ทดสอบ |  | 0.5d | 2022-09-23 A | 2022-09-23 |  | 50% | 0.25d |  | 2022-09-21 | 2022-09-21 | 0.5d | 7.5d | Pasin; Sutee | 8h | 4h | 640 | 640 | 320 |
| 49 | 3.10 | เขียน Progress report #3 | manual | 1d | 2022-09-19 A | 2022-09-19 A |  | 100% |  |  | 2022-09-19 | 2022-09-22 | 4d |  | Pasin; Sutee | 16h | 16h | 1,280 | 5,120 | 1,280 |
| 50 | 3.11 | progress report #3 | milestone, manual | 0d | 2022-09-23 A | 2022-09-23 A |  | 100% |  |  | 2022-09-23 | 2022-09-23 | 0d |  |  |  |  |  |  |  |
| 51 | 3.6 | **Application page** |  | 14d | 2022-10-25 A | 2022-11-11 | 45FS+14d | 33% | 9.33d |  | 2022-10-25 | 2022-11-11 | 14d |  |  | 128h | 48h | 10,240 | 10,240 | 3,840 |
| 52 | 3.6.1 | พัฒนาส่วน Front End |  | 5d | 2022-10-25 A | 2022-10-31 |  | 20% | 4d |  | 2022-10-25 | 2022-10-31 | 5d | 29d | Pasin | 40h | 8h | 3,200 | 3,200 | 640 |
| 53 | 3.6.2 | พัฒนาส่วน Backend & API |  | 5d | 2022-10-25 A | 2022-10-31 |  | 50% | 2.5d |  | 2022-10-25 | 2022-10-31 | 5d | 29d | Pasin; Sutee | 80h | 40h | 6,400 | 6,400 | 3,200 |
| 54 | 3.6.3 | ทดสอบ |  | 0.5d | 2022-10-25 | 2022-10-25 |  |  |  |  | 2022-10-25 | 2022-10-25 | 0.5d | 33.5d | Pasin; Sutee | 8h |  | 640 | 640 |  |

| ID | WBS | Task | Type | Duration | Start | Finish | Predecessors | Complete | Remaining | Baseline start | Baseline finish | Baseline duration | Total slack | Free slack | Constraint | Resources | Work | Actual work | Cost | Baseline cost | Actual cost |
| --- | --- | --- | --- | --- | --- | --- | --- | --- | --- | --- | --- | --- | --- | --- | --- | --- | --- | --- | --- | --- | --- |
| 55 | 3.8 | **Server** |  | 14d? | 2022-09-05 A | 2022-09-22 | 30 | 97% | 0.46d? | 2022-09-05 | 2022-09-22 | 14d |  |  |  |  | 84h | 83h | 6,720 | 6,720 | 6,640 |
| 56 | 3.8.1 | ติดตั้ง OS สำหรับ Server และสร้าง VM |  | 5d | 2022-09-05 A | 2022-09-09 A |  | 100% |  | 2022-09-05 | 2022-09-09 | 5d |  |  |  | Sutee | 40h | 40h | 3,200 | 3,200 | 3,200 |
| 57 | 3.8.2 | ตั้งค่า Network ของ Server |  | 5d | 2022-09-05 A | 2022-09-09 A |  | 100% |  | 2022-09-05 | 2022-09-09 | 5d |  |  |  | Sutee | 40h | 40h | 3,200 | 3,200 | 3,200 |
| 58 | 3.8.3 | ติดตั้งระบบ Cluster Kubernetes (MicroK8S) |  | 0.5d | 2022-09-05 A | 2022-09-05 |  | 75% | 0.12d | 2022-09-05 | 2022-09-05 | 0.5d | 69.5d |  |  | Sutee | 4h | 3h | 320 | 320 | 240 |
| 59 | 3.13.4 | สร้างระบบ Dashboard | manual | 1d? | 2022-09-05 A | 2022-09-05 |  | 75% | 0.25d? | 2022-09-05 | 2022-09-05 | 1d? |  |  |  |  |  |  |  |  |  |
| 60 | 3.14 | Image processing Application | manual | 9d | 2022-08-19 A | 2022-08-31 |  | 50% | 4.5d |  |  |  |  |  |  |  | 72h | 36h |  |  |  |
| 61 | 3.15 | เขียน Progress report #4 | manual | 2d | 2022-10-17 A | 2022-10-18 A |  | 100% |  | 2022-10-17 | 2022-10-20 | 4d |  |  |  | Pasin; Sutee | 32h | 32h | 2,560 | 5,120 | 2,560 |
| 62 | 3.16 | progress report #4 - report chapter #1 | milestone, manual | 0d | 2022-10-21 A | 2022-10-21 A |  | 100% |  | 2022-10-21 | 2022-10-21 | 0d |  |  |  |  |  |  |  |  |  |
| 63 | 3.9 | **1st Test Plan** |  | 3d | 2022-11-21 | 2022-11-23 | 35, 45, 51, 41, 55 |  |  | 2022-11-21 | 2022-11-23 | 3d |  |  |  |  | 80h |  | 6,400 | 6,400 |  |
| 64 | 3.9.1 | ทดสอบการเชื่อมต่อกันระหว่าง Web Application และ Server |  | 2d | 2022-11-21 | 2022-11-22 |  |  |  | 2022-11-21 | 2022-11-22 | 2d | 16d |  |  | Pasin; Sutee | 32h |  | 2,560 | 2,560 |  |
| 65 | 3.9.2 | ประมวลผลการทดสอบ |  | 3d | 2022-11-21 | 2022-11-23 |  |  |  | 2022-11-21 | 2022-11-23 | 3d | 15d |  |  | Pasin; Sutee | 48h |  | 3,840 | 3,840 |  |
| 66 | 3.10 | **Mock Demo - 1st** |  | 7d | 2022-11-24 | 2022-12-02 | 63 |  |  | 2022-11-24 | 2022-12-02 | 7d | 15d | 0d |  |  | 128h |  | 10,240 | 10,240 |  |
| 67 | 3.10.1 | ทดสอบการกับกลุ่มผู้ใช้กลุ่มหนึง |  | 7d | 2022-11-24 | 2022-12-02 |  |  |  | 2022-11-24 | 2022-12-02 | 7d | 15d |  |  | Pasin; Sutee | 112h |  | 8,960 | 8,960 |  |
| 68 | 3.10.2 | ประเมินความพึงพอใจ |  | 1d | 2022-11-24 | 2022-11-24 |  |  |  | 2022-11-24 | 2022-11-24 | 1d | 21d |  |  | Pasin; Sutee | 16h |  | 1,280 | 1,280 |  |
| 69 | 3.11 | **การปรับปรุงจากผลตอบรับ - 1st** |  | 5d | 2022-12-05 | 2022-12-09 | 66 |  |  | 2022-12-05 | 2022-12-09 | 5d | 15d |  |  |  | 128h |  | 10,240 | 10,240 |  |
| 70 | 3.11.1 | พัฒนาส่วน Front End เพิ่มเติมจากผลการประเมินจากผู้ใช้ |  | 5d | 2022-12-05 | 2022-12-09 |  |  |  | 2022-12-05 | 2022-12-09 | 5d | 15d |  |  | Pasin | 40h |  | 3,200 | 3,200 |  |
| 71 | 3.11.2 | พัฒนาส่วน Backend & API เพิ่มเติมจากผลการประเมินจากผู้ใช้ |  | 5d | 2022-12-05 | 2022-12-09 |  |  |  | 2022-12-05 | 2022-12-09 | 5d | 15d |  |  | Pasin; Sutee | 80h |  | 6,400 | 6,400 |  |
| 72 | 3.11.3 | ทดสอบ |  | 0.5d | 2022-12-05 | 2022-12-05 |  |  |  | 2022-12-05 | 2022-12-05 | 0.5d | 19.5d |  |  | Pasin; Sutee | 8h |  | 640 | 640 |  |
| 73 | 3.20 | เขียน Progress report #5 | manual | 4d | 2022-10-31 | 2022-11-03 |  |  |  | 2022-10-31 | 2022-11-03 | 4d |  |  |  | Pasin; Sutee | 64h |  | 5,120 | 5,120 |  |
| 74 | 3.21 | progress report #5 - report chapter #2 | milestone, manual | 0d | 2022-11-04 | 2022-11-04 |  |  |  | 2022-11-04 | 2022-11-04 | 0d |  |  |  |  |  |  |  |  |  |
| 75 | 4 | progress report #6 - report chapter #1 | milestone, manual | 0d | 2022-11-25 | 2022-11-25 |  |  |  | 2022-11-25 | 2022-11-25 | 0d |  |  |  |  |  |  |  |  |  |
| 76 | 5 | ส่งเล่มรายงานและไฟล์รายงานสำหรับสอบโครงการ 1 |  | 1d | 2022-12-09 | 2022-12-09 |  |  |  | 2022-12-09 | 2022-12-09 | 1d | 75d |  | start no earlier than 2022-12-09 |  |  |  |  |  |  |
| 77 | 6 | สอบโครงการ 1 | milestone, manual | 0d | 2022-12-16 | 2022-12-16 |  |  |  | 2022-12-16 | 2022-12-16 | 0d |  |  |  |  |  |  |  |  |  |
| 78 | 4 | **Implementation - 2nd** |  | 60d | 2023-01-02 | 2023-03-24 | 77FS+15d |  |  | 2023-01-02 | 2023-03-24 | 60d |  |  |  |  | 924h |  | 73,920 | 54,720 |  |
| 79 | 4.1 | **Application Page - model processing** |  | 2d | 2023-01-02 | 2023-01-03 | 18 |  |  | 2023-01-02 | 2023-01-03 | 2d | 0d |  |  |  | 48h |  | 3,840 | 3,840 |  |
| 80 | 4.1.1 | พัฒนาส่วน Front End |  | 1d | 2023-01-02 | 2023-01-02 |  |  |  | 2023-01-02 | 2023-01-02 | 1d | 1d |  |  | Pasin | 8h |  | 640 | 640 |  |
| 81 | 4.1.2 | พัฒนาส่วน Backend & API |  | 2d | 2023-01-02 | 2023-01-03 |  |  |  | 2023-01-02 | 2023-01-03 | 2d | 0d |  |  | Pasin; Sutee | 32h |  | 2,560 | 2,560 |  |
| 82 | 7.1.3 | พัฒนาส่วนการนำเข้า Model | manual | 1d | 2023-01-02 | 2023-01-02 |  |  |  |  |  |  |  |  |  |  |  |  |  |  |  |
| 83 | 4.1.3 | ทดสอบ |  | 0.5d | 2023-01-02 | 2023-01-02 |  |  |  | 2023-01-02 | 2023-01-02 | 0.5d | 1.5d |  |  | Pasin; Sutee | 8h |  | 640 | 640 |  |

| ID | WBS | Task | Type | Duration | Start | Finish | Predecessors | Baseline start | Baseline finish | Baseline duration | Total slack | Resources | Work | Cost | Baseline cost |
| --- | --- | --- | --- | --- | --- | --- | --- | --- | --- | --- | --- | --- | --- | --- | --- |
| 84 | 4.2 | **Market Place Page** |  | 2d | 2023-01-04 | 2023-01-05 | 79 | 2023-01-04 | 2023-01-05 | 2d | 0d |  | 48h | 3,840 | 3,840 |
| 85 | 4.2.1 | พัฒนาส่วน Front End |  | 1d | 2023-01-04 | 2023-01-04 |  | 2023-01-04 | 2023-01-04 | 1d | 1d | Pasin | 8h | 640 | 640 |
| 86 | 4.2.2 | พัฒนาส่วน Backend & API |  | 2d | 2023-01-04 | 2023-01-05 |  | 2023-01-04 | 2023-01-05 | 2d | 0d | Pasin; Sutee | 32h | 2,560 | 2,560 |
| 87 | 7.2.3 | พัฒนาส่วนระบบ Payment | manual | 1d | 2023-01-04 | 2023-01-04 |  |  |  |  |  |  |  |  |  |
| 88 | 4.2.3 | ทดสอบ |  | 0.5d | 2023-01-04 | 2023-01-04 |  | 2023-01-04 | 2023-01-04 | 0.5d | 1.5d | Pasin; Sutee | 8h | 640 | 640 |
| 89 | 3.4 | **Feed Page** |  | 14d | 2022-10-13 | 2022-11-01 | 45 | 2022-09-12 | 2022-09-20 | 7d |  |  | 128h | 10,240 | 10,240 |
| 90 | 3.4.1 | พัฒนาส่วน Front End |  | 5d | 2022-10-13 | 2022-10-19 |  | 2022-09-12 | 2022-09-16 | 5d | 112d | Pasin | 40h | 3,200 | 3,200 |
| 91 | 3.4.2 | พัฒนาส่วน Backend & API |  | 5d | 2022-10-13 | 2022-10-19 |  | 2022-09-12 | 2022-09-16 | 5d | 112d | Pasin; Sutee | 80h | 6,400 | 6,400 |
| 92 | 3.4.3 | ทดสอบ |  | 0.5d | 2022-10-13 | 2022-10-13 |  | 2022-09-12 | 2022-09-12 | 0.5d | 116.5d | Pasin; Sutee | 8h | 640 | 640 |
| 93 | 4.3 | **Model Uplaod Page** |  | 2d | 2023-01-04 | 2023-01-05 | 79 | 2023-01-04 | 2023-01-05 | 2d | 0d |  | 32h | 2,560 | 2,560 |
| 94 | 4.3.1 | พัฒนาส่วน Front End |  | 1d | 2023-01-04 | 2023-01-04 |  | 2023-01-04 | 2023-01-04 | 1d | 1d | Pasin | 8h | 640 | 640 |
| 95 | 4.3.2 | พัฒนาส่วน Backend & API |  | 2d | 2023-01-04 | 2023-01-05 |  | 2023-01-04 | 2023-01-05 | 2d | 0d | Sutee | 16h | 1,280 | 1,280 |
| 96 | 7.4.3 | พัฒนาส่วนการนำเข้า Model | manual | 1d | 2023-01-04 | 2023-01-04 |  |  |  |  |  |  |  |  |  |
| 97 | 4.3.3 | ทดสอบ |  | 0.5d | 2023-01-04 | 2023-01-04 |  | 2023-01-04 | 2023-01-04 | 0.5d | 1.5d | Pasin; Sutee | 8h | 640 | 640 |
| 98 | 4.4 | **Server** |  | 1d | 2023-01-02 | 2023-01-02 | 18 | 2023-01-02 | 2023-01-02 | 1d | 0d |  | 12h | 960 | 960 |
| 99 | 4.4.1 | พัฒนา Performance ของ Server |  | 1d | 2023-01-02 | 2023-01-02 |  | 2023-01-02 | 2023-01-02 | 1d | 3d | Sutee | 8h | 640 | 640 |
| 100 | 7.5.2 | ทดสอบการใช้งาน Model ของ Image processing application | manual | 1d | 2023-01-02 | 2023-01-02 |  |  |  |  |  |  |  |  |  |
| 101 | 7.5.3 | ปรับปรุง Docker image | manual | 1d | 2023-01-02 | 2023-01-02 |  |  |  |  |  |  |  |  |  |
| 102 | 4.4.3 | ทดสอบ |  | 0.5d | 2023-01-02 | 2023-01-02 |  | 2023-01-02 | 2023-01-02 | 0.5d | 3.5d | Sutee | 4h | 320 | 320 |
| 103 | 4.5 | **Mock Demo - 2nd** |  | 1d | 2023-01-06 | 2023-01-06 | 79, 84, 93, 98 | 2023-01-06 | 2023-01-06 | 1d | 0d |  | 32h | 2,560 | 2,560 |
| 104 | 4.5.1 | ทดสอบการกับกลุ่มผู้ใช้กลุ่มหนึง |  | 1d | 2023-01-06 | 2023-01-06 |  | 2023-01-06 | 2023-01-06 | 1d | 0d | Pasin; Sutee | 16h | 1,280 | 1,280 |
| 105 | 4.5.2 | ประเมินความพึงพอใจ |  | 1d | 2023-01-06 | 2023-01-06 |  | 2023-01-06 | 2023-01-06 | 1d | 0d | Pasin; Sutee | 16h | 1,280 | 1,280 |
| 106 | 4.6 | **การปรับปรุงจากผลตอบรับ - 2st** |  | 5d | 2023-01-09 | 2023-01-13 | 103 | 2023-01-09 | 2023-01-13 | 5d | 0d |  | 128h | 10,240 | 10,240 |
| 107 | 4.6.1 | พัฒนาส่วน Front End เพิ่มเติมจากผลการประเมินจากผู้ใช้ |  | 5d | 2023-01-09 | 2023-01-13 |  | 2023-01-09 | 2023-01-13 | 5d | 0d | Pasin | 40h | 3,200 | 3,200 |
| 108 | 4.6.2 | พัฒนาส่วน Backend & API เพิ่มเติมจากผลการประเมินจากผู้ใช้ |  | 5d | 2023-01-09 | 2023-01-13 |  | 2023-01-09 | 2023-01-13 | 5d | 0d | Pasin; Sutee | 80h | 6,400 | 6,400 |
| 109 | 4.6.3 | ทดสอบ |  | 0.5d | 2023-01-09 | 2023-01-09 |  | 2023-01-09 | 2023-01-09 | 0.5d | 4.5d | Pasin; Sutee | 8h | 640 | 640 |

| ID | WBS | Task | Type | Duration | Start | Finish | Predecessors | Baseline start | Baseline finish | Baseline duration | Total slack | Resources | Work | Cost | Baseline cost |
| --- | --- | --- | --- | --- | --- | --- | --- | --- | --- | --- | --- | --- | --- | --- | --- |
| 110 | 4.7 | **Mock Demo - 3rd** |  | 1d | 2023-01-16 | 2023-01-16 | 106 | 2023-01-16 | 2023-01-16 | 1d | 0d |  | 32h | 2,560 | 2,560 |
| 111 | 4.7.1 | ทดสอบการกับกลุ่มผู้ใช้กลุ่มหนึง |  | 1d | 2023-01-16 | 2023-01-16 |  | 2023-01-16 | 2023-01-16 | 1d | 0d | Pasin; Sutee | 16h | 1,280 | 1,280 |
| 112 | 4.7.2 | ประเมินความพึงพอใจ |  | 1d | 2023-01-16 | 2023-01-16 |  | 2023-01-16 | 2023-01-16 | 1d | 0d | Pasin; Sutee | 16h | 1,280 | 1,280 |
| 113 | 4.8 | **การปรับปรุงจากผลตอบรับ - 3rd** |  | 5d | 2023-01-17 | 2023-01-23 | 110 | 2023-01-17 | 2023-01-23 | 5d | 0d |  | 128h | 10,240 | 10,240 |
| 114 | 4.8.1 | พัฒนาส่วน Front End เพิ่มเติมจากผลการประเมินจากผู้ใช้ |  | 5d | 2023-01-17 | 2023-01-23 |  | 2023-01-17 | 2023-01-23 | 5d | 0d | Pasin | 40h | 3,200 | 3,200 |
| 115 | 4.8.2 | พัฒนาส่วน Backend & API เพิ่มเติมจากผลการประเมินจากผู้ใช้ |  | 5d | 2023-01-17 | 2023-01-23 |  | 2023-01-17 | 2023-01-23 | 5d | 0d | Pasin; Sutee | 80h | 6,400 | 6,400 |
| 116 | 4.8.3 | ทดสอบ |  | 0.5d | 2023-01-17 | 2023-01-17 |  | 2023-01-17 | 2023-01-17 | 0.5d | 4.5d | Pasin; Sutee | 8h | 640 | 640 |
| 117 | 4.9 | **เอกสารบทที่ 4-5** |  | 7d | 2023-01-23 | 2023-02-01 | 113 | 2023-01-24 | 2023-02-01 | 7d | 0d |  | 336h | 26,880 | 17,920 |
| 118 | 4.9.1 | เขียนเอกสาร บทที่ 4 |  | 7d | 2023-01-24 | 2023-02-01 |  | 2023-01-24 | 2023-02-01 | 7d | 37d | Pasin; Sutee | 112h | 8,960 | 8,960 |
| 119 | 4.9.1 | เขียนเอกสาร บทที่ 5 |  | 7d | 2023-01-24 | 2023-02-01 |  | 2023-01-24 | 2023-02-01 | 7d | 37d | Pasin; Sutee | 112h | 8,960 | 8,960 |
| 120 | 4.9.2 | ส่งให้อาจารย์ที่ปรึกษา และ แก้ไข |  | 7d | 2023-01-24 | 2023-02-01 |  | 2023-01-24 | 2023-02-01 | 7d | 37d | Pasin; Sutee | 112h | 8,960 | 8,960 |
| 121 | 7.10.4 | **เตรียมการนำเสนอ** |  | 1d | 2023-01-23 | 2023-01-24 |  |  |  |  | 0d |  |  |  |  |
| 122 | 7.10.4.1 | จัดเตรียมเอกสารนำเสนอ | manual | 1d | 2023-01-24 | 2023-01-24 |  |  |  |  |  |  |  |  |  |
| 123 | 7.10.4.2 | จัดทำ สไลด์สำหรับนำเสนอ | manual | 1d | 2023-01-23 | 2023-01-24 |  |  |  |  |  |  |  |  |  |
| 124 | 7.10.4.3 | นำเสนอ | manual | 1d | 2023-01-23 | 2023-01-24 |  |  |  |  |  |  |  |  |  |
